# DentalSync

Schedule from GanttProject, 2025-03-31 to 2026-11-10.
NullDevs
Proyecto DentalSync - Sistema de gestión odontológico (cronología corregida: inicio 31/03/2025 - entrega 10/11/2025)

## Calendars

- Project calendar: Mon-Fri working; Sat-Sun off.

## Resources

| Resource |
| --- |
| Andrés Núñez |
| Lázaro Coronel |
| Adrián Martínez |
| Florencia Passo |
| Alison Silvera |

## Schedule

| ID | WBS | Task | Duration | Start | Finish | Predecessors | Complete | Resources |
| --- | --- | --- | --- | --- | --- | --- | --- | --- |
| 1 | 1 | **FASE 1: PLANIFICACIÓN** | 22d | 2025-03-31 | 2025-04-29 |  | 100% |  |
| 2 | 1.1 | Formación del equipo y definición de roles | 3d | 2025-03-31 | 2025-04-02 |  | 100% | Andrés Núñez |
| 3 | 1.2 | Análisis de requisitos / entrevistas | 9d | 2025-04-03 | 2025-04-15 | 2 | 100% |  |
| 4 | 1.3 | Definición de arquitectura y stack | 5d | 2025-04-16 | 2025-04-22 | 3 | 100% |  |
| 5 | 1.4 | Planificación de sprints y estimaciones | 5d | 2025-04-23 | 2025-04-29 | 4 | 100% |  |
| 6 | 2 | **FASE 2: CONFIGURACIÓN ENTORNO** | 11d | 2025-04-30 | 2025-05-14 | 5 | 100% |  |
| 7 | 2.1 | Config y Eleccion Sistema Operativo | 5d | 2025-04-30 | 2025-05-06 |  | 100% |  |
| 8 | 2.2 | Instalación Laravel 12 + configuración base | 3d | 2025-05-07 | 2025-05-09 | 7 | 100% |  |
| 9 | 2.3 | Instalación Vue 3 / Vite / Tailwind | 3d | 2025-05-12 | 2025-05-14 | 8 | 100% |  |
| 10 | 2.4 | Configuración MariaDB y migraciones base | 3d | 2025-05-12 | 2025-05-14 | 8 | 100% |  |
| 11 | 3 | **FASE 3: DESARROLLO (BACKEND + FRONTEND)** | 94d | 2025-05-15 | 2025-09-23 | 9 | 100% |  |
| 12 | 3.1 | **BACKEND (padre)** | 70d | 2025-05-15 | 2025-08-20 |  | 100% |  |
| 13 | 3.1.1 | Diseño modelo de datos (ER) y migraciones | 8d | 2025-05-15 | 2025-05-26 | 10 | 100% | Adrián Martínez |
| 14 | 3.1.2 | Módulo: Autenticación y autorización | 12d | 2025-05-27 | 2025-06-11 | 13 | 100% | Adrián Martínez |
| 15 | 3.1.3 | Módulo: Pacientes (API, validaciones, historial) | 12d | 2025-06-12 | 2025-06-27 | 14 | 100% | Adrián Martínez |
| 16 | 3.1.4 | Módulo: Citas y agenda (API + lógica conflictos) | 12d | 2025-06-30 | 2025-07-15 | 15 | 100% | Adrián Martínez |
| 17 | 3.1.5 | Módulo: Pagos y facturación (API, cuotas) | 10d | 2025-07-16 | 2025-07-29 | 16 | 100% | Adrián Martínez |
| 18 | 3.1.6 | Módulo: Placas dentales (upload, viewer) | 8d | 2025-07-30 | 2025-08-08 | 17 | 100% | Adrián Martínez [80%] |
| 19 | 3.1.7 | Integración WhatsApp (backend endpoints) | 8d | 2025-08-11 | 2025-08-20 | 18 | 100% | Adrián Martínez [60%] |
| 20 | 3.2 | **FRONTEND (padre)** | 94d | 2025-05-15 | 2025-09-23 |  | 100% |  |
| 21 | 3.2.1 | Maquetación general y design system | 10d | 2025-05-15 | 2025-05-28 | 10 | 100% | Florencia Passo |
| 22 | 3.2.2 | Componentes: Auth (Login/Register) | 8d | 2025-06-12 | 2025-06-23 | 14, 21 | 100% | Lázaro Coronel [80%] |
| 23 | 3.2.3 | Pantallas: Gestión de pacientes | 12d | 2025-06-30 | 2025-07-15 | 15, 22 | 100% | Lázaro Coronel [80%] |
| 24 | 3.2.4 | Pantallas: Agenda y calendario | 15d | 2025-07-16 | 2025-08-05 | 16, 23 | 100% | Lázaro Coronel [80%] |
| 25 | 3.2.5 | Pantallas: Pagos y facturación | 12d | 2025-08-06 | 2025-08-21 | 17, 24 | 100% | Lázaro Coronel [60%] |
| 26 | 3.2.6 | Pantallas: Placas dentales (viewer) | 8d | 2025-08-22 | 2025-09-02 | 18, 25 | 100% | Lázaro Coronel [60%] |
| 27 | 3.2.7 | Integración frontend con endpoints WhatsApp | 8d | 2025-09-03 | 2025-09-12 | 19, 26 | 100% | Lázaro Coronel [40%] |
| 28 | 3.2.8 | Pruebas unitarias frontend y ajustes UX | 7d | 2025-09-15 | 2025-09-23 | 27 | 100% | Alison Silvera |

| ID | WBS | Task | Type | Duration | Start | Finish | Predecessors | Complete | Resources |
| --- | --- | --- | --- | --- | --- | --- | --- | --- | --- |
| 29 | 4 | **FASE 4: INTEGRACIÓN Y TESTING** |  | 18d | 2025-09-25 | 2025-10-20 | 19, 28 | 100% |  |
| 30 | 4.1 | Integración completa (smoke tests) |  | 6d | 2025-09-25 | 2025-10-02 |  | 100% | Andrés Núñez [40%] |
| 31 | 4.2 | Testing funcional y de casos de uso (QA) |  | 8d | 2025-10-03 | 2025-10-14 | 30 | 100% | Alison Silvera |
| 32 | 4.3 | Corrección de bugs críticos y estabilización |  | 4d | 2025-10-15 | 2025-10-20 | 31 | 100% |  |
| 33 | 5 | **FASE 5: OPTIMIZACIÓN, DOCUMENTACIÓN Y ENTREGA** |  | 12d | 2026-10-23 | 2026-11-09 | 32 | 100% |  |
| 34 | 5.1 | Optimización performance y seguridad |  | 4d | 2026-10-23 | 2026-10-28 |  | 100% | Andrés Núñez [60%] |
| 35 | 5.2 | Documentación técnica y manual de usuario |  | 3d | 2026-10-29 | 2026-11-02 | 34 | 100% | Florencia Passo [60%] |
| 36 | 5.3 | Preparación de presentación final / demo |  | 5d | 2026-11-03 | 2026-11-09 | 35 | 100% | Andrés Núñez [40%] |
| 37 | 5.4 | ENTREGA FINAL (hito) | milestone | 0d | 2026-11-10 | 2026-11-10 | 36 |  |  |
